# PRM2.0开发计划-20211116

Schedule from MS Project, 2021-11-01 to 2021-12-31.
QXB

## Calendars

- 标准: Mon-Fri 08:00-12:00, 13:00-17:00; Sat-Sun off.

## Resources

| Resource |
| --- |
| 黄梦晗 |
| 冀军 |
| 宋子寒 |
| 李涛 |
| 刘慧娟 |
| 刘睿 |
| 孙进磊 |
| 李子贺 |
| 付婷 |
| 张文燕 |
| 王振辉 |
| 汪祥 |
| 全部开发 |

## Schedule

| ID | WBS | Task | Type | Duration | Start | Finish | Total slack | Resources | Work |
| --- | --- | --- | --- | --- | --- | --- | --- | --- | --- |
| 1 | 1 | **PRM2.0** |  | 45d? | 2021-11-01 08:00 | 2021-12-31 17:00 | 0d |  | 3363.2h |
| 2 | 1.1 | 沟通、梳理需求 | manual | 2d | 2021-11-15 08:00 | 2021-11-16 17:00 |  | 全部开发 | 16h |
| 3 | 1.2 | 数据库详细设计 | manual | 3d | 2021-11-17 08:00 | 2021-11-19 17:00 |  | 黄梦晗; 刘睿; 孙进磊 | 72h |
| 4 | 1.3 | 关键功能详细设计 | manual | 3d | 2021-11-22 08:00 | 2021-11-24 17:00 |  | 全部开发 | 24h |
| 5 | 1.4 | **电子签认证变更** |  | 8d | 2021-11-10 08:00 | 2021-11-19 17:00 |  | 刘睿; 张文燕 | 292h |
| 6 | 1.4.1 | 沟通、梳理详细需求 | manual | 2d | 2021-11-10 08:00 | 2021-11-11 17:00 |  | 刘睿; 张文燕 | 32h |
| 7 | 1.4.2 | 关键功能详细设计 | manual | 1d | 2021-11-12 08:00 | 2021-11-12 17:00 |  | 刘睿 | 8h |
| 8 | 1.4.3 | **后端** |  | 3d | 2021-11-16 08:00 | 2021-11-18 17:00 |  | 刘睿 | 48h |
| 9 | 1.4.3.1 | 企业信息变更场景判断 | manual | 0.5d | 2021-11-15 08:00 | 2021-11-15 12:00 |  | 刘睿 | 4h |
| 10 | 1.4.3.2 | 企业信息接口调整 | manual | 0.5d | 2021-11-15 08:00 | 2021-11-15 12:00 |  | 刘睿 | 4h |
| 11 | 1.4.3.3 | 契约锁企业信息变更、回调接口 | manual | 0.5d | 2021-11-16 08:00 | 2021-11-16 12:00 |  | 刘睿 | 4h |
| 12 | 1.4.3.4 | 授权代表信息变更场景判断 | manual | 0.5d | 2021-11-16 08:00 | 2021-11-16 12:00 |  | 刘睿 | 4h |
| 13 | 1.4.3.5 | 授权代表信息接口调整 | manual | 0.5d | 2021-11-17 08:00 | 2021-11-17 12:00 |  | 刘睿 | 4h |
| 14 | 1.4.3.6 | 契约锁授权代表信息变更、回调接口 | manual | 0.5d | 2021-11-17 08:00 | 2021-11-17 12:00 |  | 刘睿 | 4h |
| 15 | 1.4.4 | **前端** |  | 2.5d | 2021-11-15 08:00 | 2021-11-17 12:00 | 0d | 张文燕 | 44h |
| 16 | 1.4.4.1 | 企业信息变更场景判断 | manual | 0.5d | 2021-11-15 08:00 | 2021-11-15 12:00 |  | 张文燕 | 4h |
| 17 | 1.4.4.2 | 企业信息变更交互开发 | manual | 0.5d | 2021-11-15 08:00 | 2021-11-15 12:00 |  | 张文燕 | 4h |
| 18 | 1.4.4.3 | 契约锁企业信息变更接口调用 | manual | 0.5d | 2021-11-16 08:00 | 2021-11-16 12:00 |  | 张文燕 | 4h |
| 19 | 1.4.4.4 | 授权代表信息变更场景判断 | manual | 0.5d | 2021-11-16 08:00 | 2021-11-16 12:00 |  | 张文燕 | 4h |
| 20 | 1.4.4.5 | 授权代表信息变更交互开发 | manual | 0.5d | 2021-11-17 08:00 | 2021-11-17 12:00 |  | 张文燕 | 4h |
| 21 | 1.4.4.6 | 契约锁授权代表信息变更接口调用 | manual | 0.5d | 2021-11-17 08:00 | 2021-11-17 12:00 |  | 张文燕 | 4h |
| 22 | 1.4.5 | 联调 | manual | 2d | 2021-11-18 08:00 | 2021-11-19 17:00 |  | 张文燕; 刘睿 | 32h |
| 23 | 1.5 | **渠道商注册变更字段对比** |  | 3d | 2021-11-16 08:00 | 2021-11-18 17:00 |  | 李子贺; 孙进磊 | 88h |
| 24 | 1.5.1 | 前后端实现方案调研 | manual | 1d | 2021-11-10 08:00 | 2021-11-10 17:00 |  | 李子贺; 孙进磊 | 16h |
| 25 | 1.5.2 | 后端对比结果接口 | manual | 0.5d | 2021-11-11 08:00 | 2021-11-11 12:00 |  | 孙进磊 | 4h |
| 26 | 1.5.3 | 前端对比结果接口调用，渲染页面 | manual | 0.5d | 2021-11-11 08:00 | 2021-11-11 12:00 |  | 李子贺 | 4h |
| 27 | 1.5.4 | 联调 | manual | 1d | 2021-11-12 08:00 | 2021-11-12 17:00 |  | 李子贺; 孙进磊 | 16h |

| ID | WBS | Task | Type | Duration | Start | Finish | Resources | Work |
| --- | --- | --- | --- | --- | --- | --- | --- | --- |
| 28 | 1.6 | **渠道商档案详情页i讯飞端** |  | 2d | 2021-11-15 08:00 | 2021-11-16 17:00 | 李子贺; 孙进磊 | 76h |
| 29 | 1.6.1 | **后端** |  | 0.5d | 2021-11-15 08:00 | 2021-11-15 12:00 | 孙进磊 | 8h |
| 30 | 1.6.1.1 | 渠道商详情接口 | manual | 0.25d | 2021-11-15 08:00 | 2021-11-15 10:00 | 孙进磊 | 2h |
| 31 | 1.6.1.2 | 渠道商签合作信息接口 | manual | 0.25d | 2021-11-15 08:00 | 2021-11-15 10:00 | 孙进磊 | 2h |
| 32 | 1.6.2 | **前端** |  | 2d | 2021-11-15 08:00 | 2021-11-16 17:00 | 李子贺 | 28h |
| 33 | 1.6.2.1 | 静态页面搭建 | manual | 1d | 2021-11-15 08:00 | 2021-11-15 17:00 | 李子贺 | 8h |
| 34 | 1.6.2.2 | 渠道商详情接口调用 | manual | 0.25d | 2021-11-16 08:00 | 2021-11-16 10:00 | 李子贺 | 2h |
| 35 | 1.6.2.3 | 渠道商合作信息接口调用 | manual | 0.25d | 2021-11-16 08:00 | 2021-11-16 10:00 | 李子贺 | 2h |
| 36 | 1.6.3 | 联调 | manual | 0.5d | 2021-11-16 08:00 | 2021-11-16 12:00 | 李子贺; 孙进磊 | 8h |
| 37 | 1.7 | **物理章模板本地预览** |  | 3d | 2021-11-22 08:00 | 2021-11-24 17:00 | 孙进磊; 张文燕 | 136h |
| 38 | 1.7.1 | **后端** |  | 2.5d | 2021-11-22 08:00 | 2021-11-24 12:00 | 孙进磊 | 40h |
| 39 | 1.7.1.1 | 新增 | manual | 0.5d | 2021-11-22 08:00 | 2021-11-22 12:00 | 孙进磊 | 4h |
| 40 | 1.7.1.2 | 编辑 | manual | 0.5d | 2021-11-22 08:00 | 2021-11-22 12:00 | 孙进磊 | 4h |
| 41 | 1.7.1.3 | 禁用启用 | manual | 0.5d | 2021-11-23 08:00 | 2021-11-23 12:00 | 孙进磊 | 4h |
| 42 | 1.7.1.4 | 分页列表 | manual | 0.5d | 2021-11-23 08:00 | 2021-11-23 12:00 | 孙进磊 | 4h |
| 43 | 1.7.1.5 | 查询详情 | manual | 0.5d | 2021-11-24 08:00 | 2021-11-24 12:00 | 孙进磊 | 4h |
| 44 | 1.7.2 | **前端** |  | 2.5d | 2021-11-22 08:00 | 2021-11-24 12:00 | 张文燕 | 40h |
| 45 | 1.7.2.1 | 静态页面搭建 | manual | 0.5d | 2021-11-22 08:00 | 2021-11-22 12:00 | 张文燕 | 4h |
| 46 | 1.7.2.2 | 新增接口调用 | manual | 0.5d | 2021-11-22 08:00 | 2021-11-22 12:00 | 张文燕 | 4h |
| 47 | 1.7.2.3 | 编辑、禁用启用接口调用 | manual | 0.5d | 2021-11-23 08:00 | 2021-11-23 12:00 | 张文燕 | 4h |
| 48 | 1.7.2.4 | 分页列表接口调用 | manual | 0.5d | 2021-11-23 08:00 | 2021-11-23 12:00 | 张文燕 | 4h |
| 49 | 1.7.2.5 | 查询详情接口调用 | manual | 0.5d | 2021-11-24 08:00 | 2021-11-24 12:00 | 张文燕 | 4h |
| 50 | 1.7.3 | 联调 | manual | 0.5d | 2021-11-24 08:00 | 2021-11-24 12:00 | 孙进磊; 张文燕 | 8h |
| 51 | 1.8 | **渠道签约合同超期状态更新** |  | 2d | 2021-11-25 08:00 | 2021-11-26 17:00 | 孙进磊 | 32h |
| 52 | 1.8.1 | 引入xxljob | manual | 1d | 2021-11-25 08:00 | 2021-11-25 17:00 | 孙进磊 | 8h |
| 53 | 1.8.2 | 开发定时更新状态接口 | manual | 1d | 2021-11-26 08:00 | 2021-11-26 17:00 | 孙进磊 | 8h |

| ID | WBS | Task | Type | Duration | Start | Finish | Resources | Work |
| --- | --- | --- | --- | --- | --- | --- | --- | --- |
| 54 | 1.9 | **市场秩序申报** |  | 6d | 2021-11-25 08:00 | 2021-12-02 17:00 | 刘睿; 张文燕 | 256h |
| 55 | 1.9.1 | 沟通、梳理详细需求 | manual | 1d | 2021-11-25 08:00 | 2021-11-25 17:00 | 刘睿; 张文燕 | 16h |
| 56 | 1.9.2 | **后端** |  | 4d | 2021-11-26 08:00 | 2021-12-01 17:00 | 刘睿 | 64h |
| 57 | 1.9.2.1 | 新增 | manual | 0.5d | 2021-11-26 08:00 | 2021-11-26 12:00 | 刘睿 | 4h |
| 58 | 1.9.2.2 | 创建流程 | manual | 0.5d | 2021-11-26 08:00 | 2021-11-26 12:00 | 刘睿 | 4h |
| 59 | 1.9.2.3 | 编辑 | manual | 0.5d | 2021-11-29 08:00 | 2021-11-29 12:00 | 刘睿 | 4h |
| 60 | 1.9.2.4 | 审批流程 | manual | 0.5d | 2021-11-29 08:00 | 2021-11-29 12:00 | 刘睿 | 4h |
| 61 | 1.9.2.5 | 分页列表 | manual | 0.5d | 2021-11-30 08:00 | 2021-11-30 12:00 | 刘睿 | 4h |
| 62 | 1.9.2.6 | 查询详情 | manual | 0.5d | 2021-11-30 08:00 | 2021-11-30 12:00 | 刘睿 | 4h |
| 63 | 1.9.2.7 | 删除 | manual | 0.5d | 2021-12-01 08:00 | 2021-12-01 12:00 | 刘睿 | 4h |
| 64 | 1.9.2.8 | 导出 | manual | 0.5d | 2021-12-01 08:00 | 2021-12-01 12:00 | 刘睿 | 4h |
| 65 | 1.9.3 | **前端** |  | 4d | 2021-11-26 08:00 | 2021-12-01 17:00 | 张文燕 | 64h |
| 66 | 1.9.3.1 | 静态页面搭建 | manual | 1d | 2021-11-26 08:00 | 2021-11-26 17:00 | 张文燕 | 8h |
| 67 | 1.9.3.2 | 首次提交接口调用 | manual | 0.5d | 2021-11-29 08:00 | 2021-11-29 12:00 | 张文燕 | 4h |
| 68 | 1.9.3.3 | 驳回后编辑再次提交接口调用 | manual | 0.5d | 2021-11-29 08:00 | 2021-11-29 12:00 | 张文燕 | 4h |
| 69 | 1.9.3.4 | 审批流程相关接口调用 | manual | 0.5d | 2021-11-30 08:00 | 2021-11-30 12:00 | 张文燕 | 4h |
| 70 | 1.9.3.5 | 分页列表接口调用 | manual | 0.5d | 2021-11-30 08:00 | 2021-11-30 12:00 | 张文燕 | 4h |
| 71 | 1.9.3.6 | 查询详情接口调用 | manual | 0.5d | 2021-12-01 08:00 | 2021-12-01 12:00 | 张文燕 | 4h |
| 72 | 1.9.3.7 | 删除接口调用 | manual | 0.25d | 2021-12-01 08:00 | 2021-12-01 10:00 | 张文燕 | 2h |
| 73 | 1.9.3.8 | 导出 | manual | 0.25d | 2021-11-01 08:00 | 2021-11-01 10:00 | 张文燕 | 2h |
| 74 | 1.9.4 | 联调 | manual | 1d | 2021-12-02 08:00 | 2021-12-02 17:00 | 刘睿; 张文燕 | 16h |
| 75 | 1.10 | **往来对账** |  | 17d | 2021-11-29 08:00 | 2021-12-21 17:00 | 孙进磊; 李子贺 | 655.2h |
| 76 | 1.10.1 | 沟通、梳理详细需求、关键功能详细设计 | manual | 3d | 2021-11-29 08:00 | 2021-12-01 17:00 | 孙进磊; 李子贺 [30%] | 31.2h |
| 77 | 1.10.2 | **后端** |  | 11d | 2021-12-02 08:00 | 2021-12-16 17:00 | 孙进磊 | 176h |
| 78 | 1.10.2.1 | 新增 | manual | 0.5d | 2021-12-02 08:00 | 2021-12-02 12:00 | 孙进磊 | 4h |
| 79 | 1.10.2.2 | 编辑 | manual | 0.5d | 2021-12-02 08:00 | 2021-12-02 12:00 | 孙进磊 | 4h |
| 80 | 1.10.2.3 | 创建流程 | manual | 0.5d | 2021-12-03 08:00 | 2021-12-03 12:00 | 孙进磊 | 4h |
| 81 | 1.10.2.4 | 审批流程 | manual | 0.5d | 2021-12-03 08:00 | 2021-12-03 12:00 | 孙进磊 | 4h |
| 82 | 1.10.2.5 | 分页列表 | manual | 0.5d | 2021-12-06 08:00 | 2021-12-06 12:00 | 孙进磊 | 4h |
| 83 | 1.10.2.6 | 查询详情 | manual | 0.5d | 2021-12-06 08:00 | 2021-12-06 12:00 | 孙进磊 | 4h |
| 84 | 1.10.2.7 | 删除 | manual | 0.25d | 2021-12-08 08:00 | 2021-12-08 10:00 | 孙进磊 | 2h |
| 85 | 1.10.2.8 | 创建契约锁对账函 | manual | 1d | 2021-12-07 08:00 | 2021-12-07 17:00 | 孙进磊 | 8h |
| 86 | 1.10.2.9 | 契约锁签章、回调接口 | manual | 0.25d | 2021-12-08 08:00 | 2021-12-08 10:00 | 孙进磊 | 2h |
| 87 | 1.10.2.10 | 问题反馈 | manual | 0.25d | 2021-12-08 08:00 | 2021-12-08 10:00 | 孙进磊 | 2h |
| 88 | 1.10.2.11 | 导出 | manual | 0.25d | 2021-12-08 08:00 | 2021-12-08 10:00 | 孙进磊 | 2h |
| 89 | 1.10.2.12 | 批量导入 | manual | 3d | 2021-12-09 08:00 | 2021-12-13 17:00 | 孙进磊 | 24h |
| 90 | 1.10.2.13 | 批量创建流程 | manual | 2d | 2021-12-14 08:00 | 2021-12-15 17:00 | 孙进磊 | 16h |
| 91 | 1.10.2.14 | 对账函作废 | manual | 0.5d | 2021-12-16 08:00 | 2021-12-16 12:00 | 孙进磊 | 4h |
| 92 | 1.10.2.15 | 渠道端不同意签署 | manual | 0.5d | 2021-12-16 08:00 | 2021-12-16 12:00 | 孙进磊 | 4h |

Notes:
- 57: 渠道端；提交后，生成申报编号
- 58: 渠道端
- 59: 驳回后编辑，再提交
- 60: 讯飞端；同意、不同意、转办
- 61: 渠道端、讯飞端
- 62: 渠道端、讯飞端
- 63: 渠道端；驳回后删除，删除业务数据、流程
- 64: 讯飞端
- 67: 渠道端
- 68: 渠道端
- 69: 讯飞端；同意、不同意、转办
- 70: 渠道端、讯飞端
- 71: 渠道端、讯飞端；审批记录、流程图
- 72: 渠道端
- 73: 讯飞端
- 78: 讯飞端
- 79: 讯飞端；暂存（首次暂存时生成对账函编号）；驳回后编辑和再提交流程
- 80: 讯飞端
- 81: 讯飞端；同意、不同意、转办、加签
- 82: 渠道端、讯飞端
- 83: 渠道端、讯飞端
- 84: 讯飞端；暂存、驳回后删除；删除业务数据、流程（驳回后）
- 85: 讯飞端；审批通过后创建；讯飞端静默签署
- 86: 渠道端；渠道端先签章，然后契约锁回调
- 87: 渠道端，待签署时可填写
- 88: 讯飞端
- 89: 待定；讯飞端
- 90: 待定；讯飞端
- 91: 待定；讯飞端
- 92: 待定；渠道端

| ID | WBS | Task | Type | Duration | Start | Finish | Resources | Work |
| --- | --- | --- | --- | --- | --- | --- | --- | --- |
| 93 | 1.10.3 | **前端** |  | 8d | 2021-11-30 08:00 | 2021-12-09 17:00 | 李子贺 | 128h |
| 94 | 1.10.3.1 | 静态页面搭建 | manual | 2d | 2021-11-30 08:00 | 2021-12-01 17:00 | 李子贺 | 16h |
| 95 | 1.10.3.2 | 新增接口调用 | manual | 0.5d | 2021-12-02 08:00 | 2021-12-02 12:00 | 李子贺 | 4h |
| 96 | 1.10.3.3 | 编辑接口调用 | manual | 0.5d | 2021-12-02 08:00 | 2021-12-02 12:00 | 李子贺 | 4h |
| 97 | 1.10.3.4 | 首次提交接口调用 | manual | 0.25d | 2021-12-03 08:00 | 2021-12-03 10:00 | 李子贺 | 2h |
| 98 | 1.10.3.5 | 驳回后编辑再次提交接口调用 | manual | 0.25d | 2021-12-03 08:00 | 2021-12-03 10:00 | 李子贺 | 2h |
| 99 | 1.10.3.6 | 审批流程相关接口调用 | manual | 0.5d | 2021-12-03 08:00 | 2021-12-03 12:00 | 李子贺 | 4h |
| 100 | 1.10.3.7 | 分页列表接口调用 | manual | 0.5d | 2021-12-06 08:00 | 2021-12-06 12:00 | 李子贺 | 4h |
| 101 | 1.10.3.8 | 查询详情接口调用 | manual | 0.5d | 2021-12-06 08:00 | 2021-12-06 12:00 | 李子贺 | 4h |
| 102 | 1.10.3.9 | 删除接口调用 | manual | 0.25d | 2021-12-07 08:00 | 2021-12-07 10:00 | 李子贺 | 2h |
| 103 | 1.10.3.10 | 契约锁签章接口调用 | manual | 0.25d | 2021-12-07 08:00 | 2021-12-07 10:00 | 李子贺 | 2h |
| 104 | 1.10.3.11 | 问题反馈接口调用 | manual | 0.25d | 2021-12-07 08:00 | 2021-12-07 10:00 | 李子贺 | 2h |
| 105 | 1.10.3.12 | 导出接口调用 | manual | 0.25d | 2021-12-07 08:00 | 2021-12-07 10:00 | 李子贺 | 2h |
| 106 | 1.10.3.13 | 批量导入 | manual | 1d | 2021-12-08 08:00 | 2021-12-08 17:00 | 李子贺 | 8h |
| 107 | 1.10.3.14 | 批量创建流程 | manual | 0.5d | 2021-12-09 08:00 | 2021-12-09 12:00 | 李子贺 | 4h |
| 108 | 1.10.3.15 | 对账函作废接口调用 | manual | 0.25d | 2021-12-09 08:00 | 2021-12-09 10:00 | 李子贺 | 2h |
| 109 | 1.10.3.16 | 渠道端不同意签署 | manual | 0.25d | 2021-12-09 08:00 | 2021-12-09 10:00 | 李子贺 | 2h |
| 110 | 1.10.4 | 联调 | manual | 3d | 2021-12-17 08:00 | 2021-12-21 17:00 | 李子贺; 孙进磊 | 48h |
| 111 | 1.11 | **联系我们** |  | 3d | 2021-11-25 08:00 | 2021-11-29 17:00 | 黄梦晗; 李子贺 | 144h |
| 112 | 1.11.1 | 沟通、梳理详细需求 | manual | 0.5d | 2021-11-25 08:00 | 2021-11-25 12:00 | 黄梦晗; 李子贺 | 8h |
| 113 | 1.11.2 | **后端** |  | 3d | 2021-11-25 08:00 | 2021-11-29 17:00 | 黄梦晗 | 40h |
| 114 | 1.11.2.1 | 新增 | manual | 0.5d | 2021-11-25 08:00 | 2021-11-25 12:00 | 黄梦晗 | 4h |
| 115 | 1.11.2.2 | 编辑 | manual | 0.25d | 2021-11-26 08:00 | 2021-11-26 10:00 | 黄梦晗 | 2h |
| 116 | 1.11.2.3 | 分页列表 | manual | 0.5d | 2021-11-26 08:00 | 2021-11-26 12:00 | 黄梦晗 | 4h |
| 117 | 1.11.2.4 | 查询详情 | manual | 0.5d | 2021-11-26 08:00 | 2021-11-26 12:00 | 黄梦晗 | 4h |
| 118 | 1.11.2.5 | 导出 | manual | 0.25d | 2021-11-27 08:00 | 2021-11-27 10:00 | 黄梦晗 | 2h |

Notes:
- 95: 讯飞端
- 96: 讯飞端；暂存；驳回后编辑
- 97: 讯飞端
- 98: 讯飞端
- 99: 讯飞端；同意、不同意、转办、加签
- 100: 渠道端、讯飞端
- 101: 渠道端、讯飞端；审批记录、流程图
- 102: 讯飞端；暂存、驳回后删除
- 103: 渠道端
- 104: 渠道端
- 105: 讯飞端
- 106: 待定；讯飞端
- 107: 待定；讯飞端
- 108: 待定；讯飞端
- 109: 待定；渠道端
- 114: 渠道端
- 115: 讯飞端管理员填写表单处理意见，更新其它字段
- 116: 渠道端、讯飞端
- 117: 渠道端、讯飞端
- 118: 讯飞端

| ID | WBS | Task | Type | Duration | Start | Finish | Resources | Work |
| --- | --- | --- | --- | --- | --- | --- | --- | --- |
| 119 | 1.11.3 | **前端** |  | 3d | 2021-11-25 08:00 | 2021-11-29 17:00 | 李子贺 | 40h |
| 120 | 1.11.3.1 | 静态页面搭建 | manual | 0.5d | 2021-11-25 08:00 | 2021-11-25 12:00 | 李子贺 | 4h |
| 121 | 1.11.3.2 | 提报接口调用 | manual | 0.5d | 2021-11-25 08:00 | 2021-11-25 12:00 | 李子贺 | 4h |
| 122 | 1.11.3.3 | 讯飞端管理员处理接口调用 | manual | 0.25d | 2021-11-26 08:00 | 2021-11-26 10:00 | 李子贺 | 2h |
| 123 | 1.11.3.4 | 分页列表接口调用 | manual | 0.25d | 2021-11-26 08:00 | 2021-11-26 10:00 | 李子贺 | 2h |
| 124 | 1.11.3.5 | 查询详情接口调用 | manual | 0.25d | 2021-11-29 08:00 | 2021-11-29 10:00 | 李子贺 | 2h |
| 125 | 1.11.3.6 | 导出接口调用 | manual | 0.25d | 2021-11-29 08:00 | 2021-11-29 10:00 | 李子贺 | 2h |
| 126 | 1.11.4 | 联调 | manual | 0.5d | 2021-11-29 08:00 | 2021-11-29 12:00 | 黄梦晗; 李子贺 | 8h |
| 127 | 1.12 | **渠道商建档** |  | 5d | 2021-12-03 08:00 | 2021-12-09 17:00 | 刘睿; 张文燕 | 208h |
| 128 | 1.12.1 | 沟通、梳理详细需求 | manual | 1d | 2021-12-03 08:00 | 2021-12-03 17:00 | 刘睿; 张文燕 | 16h |
| 129 | 1.12.2 | **后端** |  | 3d | 2021-12-06 08:00 | 2021-12-08 17:00 | 刘睿 | 48h |
| 130 | 1.12.2.1 | 新增 | manual | 0.5d | 2021-12-06 08:00 | 2021-12-06 12:00 | 刘睿 | 4h |
| 131 | 1.12.2.2 | 编辑 | manual | 0.5d | 2021-12-06 08:00 | 2021-12-06 12:00 | 刘睿 | 4h |
| 132 | 1.12.2.3 | 审批流程 | manual | 0.25d | 2021-12-08 08:00 | 2021-12-08 10:00 | 刘睿 | 2h |
| 133 | 1.12.2.4 | 分页列表 | manual | 0.5d | 2021-12-07 08:00 | 2021-12-07 12:00 | 刘睿 | 4h |
| 134 | 1.12.2.5 | 查询详情 | manual | 0.5d | 2021-12-07 08:00 | 2021-12-07 12:00 | 刘睿 | 4h |
| 135 | 1.12.2.6 | 导出 | manual | 0.25d | 2021-12-08 08:00 | 2021-12-08 10:00 | 刘睿 | 2h |
| 136 | 1.12.2.7 | 同步CRM | manual | 0.25d | 2021-12-08 08:00 | 2021-12-08 10:00 | 刘睿 | 2h |
| 137 | 1.12.2.8 | 渠道商注册，公司信息查询接口调整 | manual | 0.25d | 2021-12-08 08:00 | 2021-12-08 10:00 | 刘睿 | 2h |
| 138 | 1.12.3 | **前端** |  | 3d | 2021-12-06 08:00 | 2021-12-08 17:00 | 张文燕 | 48h |
| 139 | 1.12.3.1 | 静态页面搭建 | manual | 1d | 2021-12-06 08:00 | 2021-12-06 17:00 | 张文燕 | 8h |
| 140 | 1.12.3.2 | 首次提交接口调用 | manual | 0.5d | 2021-12-07 08:00 | 2021-12-07 12:00 | 张文燕 | 4h |
| 141 | 1.12.3.3 | 驳回后编辑再次提交接口调用 | manual | 0.25d | 2021-12-07 08:00 | 2021-12-07 10:00 | 张文燕 | 2h |
| 142 | 1.12.3.4 | 审批流程相关接口调用 | manual | 0.25d | 2021-12-07 08:00 | 2021-12-07 10:00 | 张文燕 | 2h |
| 143 | 1.12.3.5 | 分页列表接口调用 | manual | 0.25d | 2021-12-08 08:00 | 2021-12-08 10:00 | 张文燕 | 2h |
| 144 | 1.12.3.6 | 查询详情接口调用 | manual | 0.25d | 2021-12-08 08:00 | 2021-12-08 10:00 | 张文燕 | 2h |
| 145 | 1.12.3.7 | 导出接口调用 | manual | 0.25d | 2021-12-08 08:00 | 2021-12-08 10:00 | 张文燕 | 2h |
| 146 | 1.12.3.8 | 渠道商注册，公司信息查询接口调整 | manual | 0.25d | 2021-12-08 08:00 | 2021-12-08 10:00 | 张文燕 | 2h |
| 147 | 1.12.4 | 联调 | manual | 1d | 2021-12-09 08:00 | 2021-12-09 17:00 | 刘睿; 张文燕 | 16h |

Notes:
- 121: 渠道端
- 123: 渠道端、讯飞端
- 124: 渠道端、讯飞端
- 125: 讯飞端
- 130: 讯飞端
- 131: 驳回后编辑，再提交
- 132: 讯飞端；同意、不同意；建档不走流程引擎
- 133: 讯飞端
- 134: 讯飞端
- 135: 讯飞端
- 137: 渠道端
- 140: 讯飞端
- 141: 讯飞端
- 142: 讯飞端；同意、不同意
- 143: 讯飞端
- 144: 讯飞端
- 145: 讯飞端
- 146: 渠道端

| ID | WBS | Task | Type | Duration | Start | Finish | Resources | Work |
| --- | --- | --- | --- | --- | --- | --- | --- | --- |
| 148 | 1.13 | **渠道认证** |  | 6d | 2021-12-10 08:00 | 2021-12-17 17:00 | 刘睿; 张文燕 | 248h |
| 149 | 1.13.1 | 沟通、梳理详细需求 | manual | 1d | 2021-12-10 08:00 | 2021-12-10 17:00 | 刘睿 | 8h |
| 150 | 1.13.2 | **后端** |  | 4d | 2021-12-13 08:00 | 2021-12-16 17:00 | 刘睿 | 64h |
| 151 | 1.13.2.1 | 新增 | manual | 0.5d | 2021-12-13 08:00 | 2021-12-13 12:00 | 刘睿 | 4h |
| 152 | 1.13.2.2 | 创建流程 | manual | 0.5d | 2021-12-13 08:00 | 2021-12-13 12:00 | 刘睿 | 4h |
| 153 | 1.13.2.3 | 编辑 | manual | 0.5d | 2021-12-14 08:00 | 2021-12-14 12:00 | 刘睿 | 4h |
| 154 | 1.13.2.4 | 审批流程 | manual | 0.5d | 2021-12-14 08:00 | 2021-12-14 12:00 | 刘睿 | 4h |
| 155 | 1.13.2.5 | 分页列表 | manual | 0.5d | 2021-12-15 08:00 | 2021-12-15 12:00 | 刘睿 | 4h |
| 156 | 1.13.2.6 | 查询详情 | manual | 0.5d | 2021-12-15 08:00 | 2021-12-15 12:00 | 刘睿 | 4h |
| 157 | 1.13.2.7 | 调整渠道商信息接口 | manual | 0.25d | 2021-12-16 08:00 | 2021-12-16 10:00 | 刘睿 | 2h |
| 158 | 1.13.2.8 | 删除 | manual | 0.25d | 2021-12-16 08:00 | 2021-12-16 10:00 | 刘睿 | 2h |
| 159 | 1.13.2.9 | 导出 | manual | 0.5d | 2021-12-16 08:00 | 2021-12-16 12:00 | 刘睿 | 4h |
| 160 | 1.13.3 | **前端** |  | 4d | 2021-12-13 08:00 | 2021-12-16 17:00 | 张文燕 | 64h |
| 161 | 1.13.3.1 | 静态页面搭建 | manual | 1d | 2021-12-13 08:00 | 2021-12-13 17:00 | 张文燕 | 8h |
| 162 | 1.13.3.2 | 首次提交接口调用 | manual | 0.5d | 2021-12-14 08:00 | 2021-12-14 12:00 | 张文燕 | 4h |
| 163 | 1.13.3.3 | 驳回后编辑再次提交接口调用 | manual | 0.5d | 2021-12-14 08:00 | 2021-12-14 12:00 | 张文燕 | 4h |
| 164 | 1.13.3.4 | 审批流程相关接口调用 | manual | 0.5d | 2021-12-15 08:00 | 2021-12-15 12:00 | 张文燕 | 4h |
| 165 | 1.13.3.5 | 分页列表接口调用 | manual | 0.5d | 2021-12-15 08:00 | 2021-12-15 12:00 | 张文燕 | 4h |
| 166 | 1.13.3.6 | 查询详情接口调用 | manual | 0.5d | 2021-12-16 08:00 | 2021-12-16 12:00 | 张文燕 | 4h |
| 167 | 1.13.3.7 | 渠道商信息查看调整 | manual | 0.25d | 2021-12-16 08:00 | 2021-12-16 10:00 | 张文燕 | 2h |
| 168 | 1.13.3.8 | 删除、导出接口调用 | manual | 0.25d | 2021-12-16 08:00 | 2021-12-16 10:00 | 张文燕 | 2h |
| 169 | 1.13.4 | 联调 | manual | 1d | 2021-12-17 08:00 | 2021-12-17 17:00 | 刘睿; 张文燕 | 16h |
| 170 | 1.14 | **合同电签平台集成** |  | 5d | 2021-12-20 08:00 | 2021-12-24 17:00 | 刘睿; 张文燕 | 200h |
| 171 | 1.14.1 | 沟通、梳理详细需求 | manual | 1d | 2021-12-20 08:00 | 2021-12-20 17:00 | 刘睿; 张文燕 | 16h |

Notes:
- 151: 讯飞端；提交后，生成申报编号
- 152: 讯飞端
- 153: 驳回后编辑，再提交
- 154: 讯飞端；审批通过后更新渠道商档案信息；同意、不同意、转办、加签
- 155: 讯飞端
- 156: 讯飞端
- 157: 渠道商档案详情接口（渠道端、讯飞端）、渠道端门户首页公司信息接口
- 158: 讯飞端；驳回后删除，删除业务数据、流程
- 159: 讯飞端
- 162: 讯飞端
- 163: 讯飞端
- 164: 讯飞端；同意、不同意、转办、加签
- 165: 渠道端、讯飞端
- 166: 渠道端、讯飞端；审批记录、流程图
- 167: 渠道商档案详情接口（渠道端、讯飞端）、渠道端门户首页公司信息接口
- 168: 讯飞端
- 170: 孙进磊配合支持

| ID | WBS | Task | Type | Duration | Start | Finish | Resources | Work |
| --- | --- | --- | --- | --- | --- | --- | --- | --- |
| 172 | 1.14.2 | **后端** |  | 3d | 2021-12-21 08:00 | 2021-12-23 17:00 | 刘睿 | 48h |
| 173 | 1.14.2.1 | 渠道商电子签认证状态查询接口 | manual | 0.25d | 2021-12-21 08:00 | 2021-12-21 10:00 | 刘睿 | 2h |
| 174 | 1.14.2.2 | 渠道商电子签授权代表信息查询接口 | manual | 0.25d | 2021-12-21 08:00 | 2021-12-21 10:00 | 刘睿 | 2h |
| 175 | 1.14.2.3 | OA、PRM、CRM集成相关接口开发 | manual | 2.5d | 2021-12-21 08:00 | 2021-12-23 12:00 | 刘睿 | 20h |
| 176 | 1.14.3 | **前端** |  | 3d | 2021-12-21 08:00 | 2021-12-23 17:00 | 张文燕 | 48h |
| 177 | 1.14.3.1 | OA、PRM、CRM集成相关页面、交互开发 | manual | 3d | 2021-12-21 08:00 | 2021-12-23 17:00 | 张文燕 | 24h |
| 178 | 1.14.4 | 联调 | manual | 1d | 2021-12-24 08:00 | 2021-12-24 17:00 | 张文燕 | 8h |
| 179 | 1.15 | **PRM商机同步CRM** |  | 3d | 2021-12-21 08:00 | 2021-12-23 17:00 | 孙进磊 | 60h |
| 180 | 1.15.1 | 沟通、梳理详细需求 | manual | 0.5d | 2021-12-21 08:00 | 2021-12-21 12:00 | 孙进磊 | 4h |
| 181 | 1.15.2 | **后端** |  | 2d | 2021-12-21 08:00 | 2021-12-22 17:00 | 孙进磊 | 28h |
| 182 | 1.15.2.1 | 商机新增同步CRM接口 | manual | 1d | 2021-12-21 08:00 | 2021-12-21 17:00 | 孙进磊 | 8h |
| 183 | 1.15.2.2 | 商机变更同步CRM接口 | manual | 0.5d | 2021-12-22 08:00 | 2021-12-22 12:00 | 孙进磊 | 4h |
| 184 | 1.15.2.3 | 商机结果提报同步CRM接口 | milestone, manual | 0d | 2021-12-22 17:00 | 2021-12-22 17:00 | 孙进磊 |  |
| 185 | 1.15.3 | 联调 | manual | 0.5d | 2021-12-23 08:00 | 2021-12-23 12:00 | 孙进磊 | 4h |
| 186 | 1.16 | **数据通知** |  | 7d | 2021-12-15 08:00 | 2021-12-23 17:00 | 黄梦晗; 李子贺 | 288h |
| 187 | 1.16.1 | 沟通、梳理详细需求 | manual | 1d | 2021-12-15 08:00 | 2021-12-15 17:00 | 黄梦晗; 李子贺 | 16h |
| 188 | 1.16.2 | **后端** |  | 5d | 2021-12-16 08:00 | 2021-12-22 17:00 | 黄梦晗 | 80h |
| 189 | 1.16.2.1 | 数据上传批量导入 | manual | 2d | 2021-12-16 08:00 | 2021-12-17 17:00 | 黄梦晗 | 16h |
| 190 | 1.16.2.2 | 新增 | manual | 0.5d | 2021-12-20 08:00 | 2021-12-20 12:00 | 黄梦晗 | 4h |
| 191 | 1.16.2.3 | 渠道端回执 | manual | 0.5d | 2021-12-20 08:00 | 2021-12-20 12:00 | 黄梦晗 | 4h |
| 192 | 1.16.2.4 | 查询详情 | manual | 0.5d | 2021-12-21 08:00 | 2021-12-21 12:00 | 黄梦晗 | 4h |
| 193 | 1.16.2.5 | 分页列表 | manual | 0.5d | 2021-12-21 08:00 | 2021-12-21 12:00 | 黄梦晗 | 4h |
| 194 | 1.16.2.6 | 作废、撤回 | manual | 0.5d | 2021-12-22 08:00 | 2021-12-22 12:00 | 黄梦晗 | 4h |
| 195 | 1.16.2.7 | 导出 | manual | 0.5d | 2021-12-22 08:00 | 2021-12-22 12:00 | 黄梦晗 | 4h |

Notes:
- 173: 给CRM
- 174: 给OA
- 179: 李子贺配合支持
- 185: CRM需配合
- 189: 讯飞端
- 190: 讯飞端
- 192: 渠道端、讯飞端
- 193: 渠道端、讯飞端
- 194: 讯飞端
- 195: 讯飞端

| ID | WBS | Task | Type | Duration | Start | Finish | Resources | Work |
| --- | --- | --- | --- | --- | --- | --- | --- | --- |
| 196 | 1.16.3 | **前端** |  | 4d | 2021-12-17 08:00 | 2021-12-22 17:00 | 李子贺 | 64h |
| 197 | 1.16.3.1 | 静态页面搭建 | manual | 1.5d | 2021-12-17 08:00 | 2021-12-20 12:00 | 李子贺 | 12h |
| 198 | 1.16.3.2 | 数据上传批量导入接口调用 | manual | 0.5d | 2021-12-20 08:00 | 2021-12-20 12:00 | 李子贺 | 4h |
| 199 | 1.16.3.3 | 新增接口调用 | manual | 0.5d | 2021-12-21 08:00 | 2021-12-21 12:00 | 李子贺 | 4h |
| 200 | 1.16.3.4 | 查询详情接口调用 | manual | 0.5d | 2021-12-21 08:00 | 2021-12-21 12:00 | 李子贺 | 4h |
| 201 | 1.16.3.5 | 作废、撤回接口调用 | manual | 0.5d | 2021-12-22 08:00 | 2021-12-22 12:00 | 李子贺 | 4h |
| 202 | 1.16.3.6 | 渠道端回执接口调用 | manual | 0.25d | 2021-12-22 08:00 | 2021-12-22 10:00 | 李子贺 | 2h |
| 203 | 1.16.3.7 | 导出接口调用 | manual | 0.25d | 2021-12-22 08:00 | 2021-12-22 10:00 | 李子贺 | 2h |
| 204 | 1.16.4 | 联调 | manual | 1d | 2021-12-23 08:00 | 2021-12-23 17:00 | 李子贺; 黄梦晗 | 16h |
| 205 | 1.17 | **签约简化审批** |  | 2d | 2021-12-24 08:00 | 2021-12-27 17:00 | 孙进磊; 李子贺 | 64h |
| 206 | 1.17.1 | 沟通、梳理详细需求 | manual | 0.5d | 2021-12-24 08:00 | 2021-12-24 12:00 | 李子贺; 孙进磊 | 8h |
| 207 | 1.17.2 | 渠道签约新增字段：是否内部导入 | manual | 0.5d | 2021-12-24 08:00 | 2021-12-24 12:00 | 孙进磊 | 4h |
| 208 | 1.17.3 | 前端新增一个按钮，根据按钮区分是否内部导入 | manual | 0.5d | 2021-12-24 08:00 | 2021-12-24 12:00 | 李子贺 | 4h |
| 209 | 1.17.4 | 调整创建流程、审批流程接口 | manual | 0.5d | 2021-12-27 08:00 | 2021-12-27 12:00 | 李子贺; 孙进磊 | 8h |
| 210 | 1.17.5 | 联调 | manual | 0.5d | 2021-12-27 08:00 | 2021-12-27 12:00 | 李子贺; 孙进磊 | 8h |
| 211 | 1.18 | **i讯飞待办** |  | 5d | 2021-12-27 08:00 | 2021-12-31 17:00 | 李子贺; 刘睿; 孙进磊; 张文燕 | 504h |
| 212 | 1.18.1 | **市场秩序申报** |  | 2d | 2021-12-27 08:00 | 2021-12-28 17:00 | 刘睿; 张文燕 | 88h |
| 213 | 1.18.1.1 | **后端** |  | 1.5d | 2021-12-27 08:00 | 2021-12-28 12:00 | 刘睿 | 24h |
| 214 | 1.18.1.1.1 | 查询详情接口提供 | manual | 0.5d | 2021-12-27 08:00 | 2021-12-27 12:00 | 刘睿 | 4h |
| 215 | 1.18.1.1.2 | 审批流程相关接口提供 | manual | 0.5d | 2021-12-27 08:00 | 2021-12-27 12:00 | 刘睿 | 4h |
| 216 | 1.18.1.1.3 | 删除接口提供 | manual | 0.5d | 2021-12-28 08:00 | 2021-12-28 12:00 | 刘睿 | 4h |
| 217 | 1.18.1.2 | **前端** |  | 1.5d | 2021-12-27 08:00 | 2021-12-28 12:00 | 张文燕 | 24h |
| 218 | 1.18.1.2.1 | 静态页面搭建 | manual | 0.5d | 2021-12-27 08:00 | 2021-12-27 12:00 | 张文燕 | 4h |
| 219 | 1.18.1.2.2 | 查询详情接口调用 | manual | 0.5d | 2021-12-27 08:00 | 2021-12-27 12:00 | 张文燕 | 4h |
| 220 | 1.18.1.2.3 | 审批流程相关接口调用 | manual | 0.25d | 2021-12-28 08:00 | 2021-12-28 10:00 | 张文燕 | 2h |
| 221 | 1.18.1.2.4 | 删除接口调用 | manual | 0.25d | 2021-12-28 08:00 | 2021-12-28 10:00 | 张文燕 | 2h |
| 222 | 1.18.1.3 | 联调 | manual | 0.5d | 2021-12-28 08:00 | 2021-12-28 12:00 | 刘睿; 张文燕 | 8h |

Notes:
- 198: 讯飞端
- 199: 讯飞端
- 200: 渠道端、讯飞端
- 201: 讯飞端
- 203: 讯飞端
- 216: 同意、不同意、转办

| ID | WBS | Task | Type | Duration | Start | Finish | Resources | Work |
| --- | --- | --- | --- | --- | --- | --- | --- | --- |
| 223 | 1.18.2 | **对账单** |  | 3d | 2021-12-29 08:00 | 2021-12-31 17:00 | 孙进磊; 李子贺 | 128h |
| 224 | 1.18.2.1 | **后端** |  | 2d | 2021-12-28 08:00 | 2021-12-29 17:00 | 孙进磊 | 32h |
| 225 | 1.18.2.1.1 | 查询详情接口提供 | manual | 1d | 2021-12-28 08:00 | 2021-12-28 17:00 | 孙进磊 | 8h |
| 226 | 1.18.2.1.2 | 审批流程相关接口提供 | manual | 0.5d | 2021-12-29 08:00 | 2021-12-29 12:00 | 孙进磊 | 4h |
| 227 | 1.18.2.1.3 | 删除接口提供 | manual | 0.5d | 2021-12-29 08:00 | 2021-12-29 12:00 | 孙进磊 | 4h |
| 228 | 1.18.2.2 | **前端** |  | 2d | 2021-12-29 08:00 | 2021-12-30 17:00 | 李子贺 | 32h |
| 229 | 1.18.2.2.1 | 静态页面搭建 | manual | 0.5d | 2021-12-29 08:00 | 2021-12-29 12:00 | 李子贺 | 4h |
| 230 | 1.18.2.2.2 | 查询详情接口调用 | manual | 0.5d | 2021-12-29 08:00 | 2021-12-29 12:00 | 李子贺 | 4h |
| 231 | 1.18.2.2.3 | 审批流程相关接口调用 | manual | 0.5d | 2021-12-30 08:00 | 2021-12-30 12:00 | 李子贺 | 4h |
| 232 | 1.18.2.2.4 | 删除接口调用 | manual | 0.5d | 2021-12-30 08:00 | 2021-12-30 12:00 | 李子贺 | 4h |
| 233 | 1.18.2.3 | 联调 | manual | 1d | 2021-12-31 08:00 | 2021-12-31 17:00 | 李子贺; 孙进磊 | 16h |
| 234 | 1.18.3 | **渠道认证** |  | 3d | 2021-12-29 08:00 | 2021-12-31 17:00 | 刘睿; 张文燕 | 128h |
| 235 | 1.18.3.1 | **后端** |  | 2d | 2021-12-29 08:00 | 2021-12-30 17:00 | 刘睿 | 32h |
| 236 | 1.18.3.1.1 | 查询详情接口提供 | manual | 1d | 2021-12-29 08:00 | 2021-12-29 17:00 | 刘睿 | 8h |
| 237 | 1.18.3.1.2 | 审批流程相关接口提供 | manual | 0.5d | 2021-12-30 08:00 | 2021-12-30 12:00 | 刘睿 | 4h |
| 238 | 1.18.3.1.3 | 删除接口提供 | manual | 0.5d | 2021-12-30 08:00 | 2021-12-30 12:00 | 刘睿 | 4h |
| 239 | 1.18.3.2 | **前端** |  | 2d | 2021-12-29 08:00 | 2021-12-30 17:00 | 张文燕 | 32h |
| 240 | 1.18.3.2.1 | 静态页面搭建 | manual | 0.5d | 2021-12-29 08:00 | 2021-12-29 12:00 | 张文燕 | 4h |
| 241 | 1.18.3.2.2 | 查询详情接口调用 | manual | 0.5d | 2021-12-29 08:00 | 2021-12-29 12:00 | 张文燕 | 4h |
| 242 | 1.18.3.2.3 | 审批流程相关接口调用 | manual | 0.5d | 2021-12-30 08:00 | 2021-12-30 12:00 | 张文燕 | 4h |
| 243 | 1.18.3.2.4 | 删除接口调用 | manual | 0.5d | 2021-12-30 08:00 | 2021-12-30 12:00 | 张文燕 | 4h |
| 244 | 1.18.3.3 | 联调 | manual | 1d | 2021-12-31 08:00 | 2021-12-31 17:00 | 刘睿; 张文燕 | 16h |
| 245 | 1.19 | 代码评审 | manual | 1d? | 2021-11-10 08:00 | 2021-11-10 17:00 |  |  |
| 246 | 1.20 | 测试版本 | manual | 1d? | 2021-11-10 08:00 | 2021-11-10 17:00 |  |  |
| 247 | 1.21 | 正式版本 | manual | 1d? | 2021-11-10 08:00 | 2021-11-10 17:00 |  |  |

Notes:
- 227: 同意、不同意、转办、加签
- 238: 同意、不同意、转办、加签
